# Zodiac

Schedule from MS Project, 2014-03-10 to 2014-05-09, costs in $.

## Calendars

- Standard: Mon-Fri 08:00-12:00, 13:00-17:00; Sat-Sun off.

## Resources

| Resource | Rate |
| --- | --- |
| Monika Adamski | 200 |
| Nedim Bruic |  |
| Catherine Tote |  |
| Robert |  |
| Jenna |  |
| Eric |  |
| Helena |  |
| Dennis |  |
| Henry |  |
| James |  |

## Schedule

| ID | WBS | Task | Duration | Start | Finish | Baseline start | Baseline finish | Baseline duration | Total slack | Constraint | Resources | Work | Cost |
| --- | --- | --- | --- | --- | --- | --- | --- | --- | --- | --- | --- | --- | --- |
| 1 | 1 | **Zodiac music design** | 45d | 2014-03-10 | 2014-05-09 |  |  |  | 0d |  |  | 920h | 72,000 |
| 2 | 1.1 | Twelve animals cartoon design | 15d | 2014-03-10 | 2014-03-28 | 2014-03-10 | 2014-03-28 | 15d | 30d | start no earlier than 2014-03-08 | Monika Adamski | 120h | 24,000 |
| 3 | 1.2 | Toy body design | 30d | 2014-03-31 | 2014-05-09 | 2014-03-31 | 2014-05-09 | 30d | 0d | start no earlier than 2014-03-24 | Monika Adamski | 240h | 48,000 |
| 4 | 1.3 | Interface design | 15d | 2014-03-10 | 2014-03-28 | 2014-03-10 | 2014-03-28 | 15d | 30d | start no earlier than 2014-03-08 | Nedim Bruic | 120h |  |
| 5 | 1.4 | Music player circuit design | 15d | 2014-03-31 | 2014-04-18 | 2014-03-31 | 2014-04-18 | 15d | 15d | start no earlier than 2014-03-24 | Nedim Bruic | 120h |  |
| 6 | 1.5 | Recorder circuit design | 15d | 2014-03-10 | 2014-03-28 | 2014-03-08 | 2014-03-27 | 15d | 30d | start no earlier than 2014-03-08 | Catherine Tote | 120h |  |
| 7 | 1.6 | Light circuit design | 15d | 2014-04-01 | 2014-04-21 | 2014-03-08 | 2014-03-27 | 15d | 14d | start no earlier than 2014-04-01 | Catherine Tote | 120h |  |
| 8 | 1.7 | light design | 10d | 2014-04-22 | 2014-05-05 | 2014-03-08 | 2014-03-20 | 10d | 4d | start no earlier than 2014-04-17 | Catherine Tote | 80h |  |
| 9 | 2 | **Player implement** | 37d | 2014-03-10 | 2014-04-29 |  |  |  | 8d |  |  | 504h |  |
| 10 | 2.1 | music plays functions | 7d | 2014-03-10 | 2014-03-18 | 2014-03-08 | 2014-03-17 | 7d | 38d | start no earlier than 2014-03-08 | Robert | 56h |  |
| 11 | 2.2 | play setting | 10d | 2014-03-19 | 2014-04-01 | 2014-03-08 | 2014-03-20 | 10d | 28d | start no earlier than 2014-03-16 | Robert | 80h |  |
| 12 | 2.3 | create playlist(s) | 5d | 2014-04-02 | 2014-04-08 | 2014-03-08 | 2014-03-13 | 5d | 23d | start no earlier than 2014-04-01 | Robert | 40h |  |
| 13 | 2.4 | add music files into a playlist | 5d | 2014-03-17 | 2014-03-21 | 2014-03-08 | 2014-03-13 | 5d | 35d |  | Jenna | 40h |  |
| 14 | 2.5 | remove the music files from a playlist | 5d | 2014-03-24 | 2014-03-28 | 2014-03-08 | 2014-03-13 | 5d | 30d |  | Jenna | 40h |  |
| 15 | 2.6 | display playlists | 5d | 2014-04-16 | 2014-04-22 | 2014-03-08 | 2014-03-13 | 5d | 13d |  | Robert | 40h |  |
| 16 | 2.7 | playlist selection | 5d | 2014-04-23 | 2014-04-29 | 2014-03-08 | 2014-03-13 | 5d | 8d |  | Robert | 40h |  |
| 17 | 2.8 | copy music/songs | 5d | 2014-03-31 | 2014-04-04 | 2014-03-08 | 2014-03-13 | 5d | 25d |  | Jenna | 40h |  |
| 18 | 2.9 | delete music/songs | 4d | 2014-04-07 | 2014-04-10 | 2014-03-08 | 2014-03-13 | 5d | 21d |  | Jenna | 32h |  |
| 19 | 2.10 | sound fades out gradually | 7d | 2014-04-01 | 2014-04-09 | 2014-03-08 | 2014-03-13 | 5d | 22d | start no earlier than 2014-04-01 | James | 56h |  |
| 20 | 2.11 | Volume adjust | 5d | 2014-03-24 | 2014-03-28 | 2014-03-08 | 2014-03-13 | 5d | 30d | start no earlier than 2014-03-24 | James | 40h |  |
| 21 | 3 | **Recorder implement** | 34d | 2014-03-10 | 2014-04-24 |  |  |  | 11d |  |  | 200h |  |
| 22 | 3.1 | record | 10d | 2014-03-10 | 2014-03-21 | 2014-03-08 | 2014-03-20 | 10d | 35d | start no earlier than 2014-03-08 | James | 80h |  |
| 23 | 3.2 | copy /move record files to computer | 5d | 2014-04-11 | 2014-04-17 | 2014-03-08 | 2014-03-13 | 5d | 16d |  | Jenna | 40h |  |
| 24 | 3.3 | erase the record files | 5d | 2014-04-18 | 2014-04-24 | 2014-03-08 | 2014-03-13 | 5d | 11d |  | Jenna | 40h |  |
| 25 | 3.4 | play record file | 5d | 2014-04-09 | 2014-04-15 | 2014-03-08 | 2014-03-13 | 5d | 18d |  | Robert | 40h |  |

| ID | WBS | Task | Duration | Start | Finish | Baseline start | Baseline finish | Baseline duration | Total slack | Constraint | Resources | Work |
| --- | --- | --- | --- | --- | --- | --- | --- | --- | --- | --- | --- | --- |
| 26 | 4 | **Light implement** | 38d | 2014-03-10 | 2014-04-30 |  |  |  | 7d |  |  | 120h |
| 27 | 4.1 | setting the color of light | 5d | 2014-03-10 | 2014-03-14 | 2014-03-08 | 2014-03-13 | 5d | 40d |  | Jenna | 40h |
| 28 | 4.2 | setting the time to fade out the light | 5d | 2014-04-17 | 2014-04-23 | 2014-03-08 | 2014-03-13 | 5d | 12d | start no earlier than 2014-04-17 | James | 40h |
| 29 | 4.3 | light fades out gradually | 5d | 2014-04-24 | 2014-04-30 | 2014-03-08 | 2014-03-13 | 5d | 7d | start no earlier than 2014-04-17 | James | 40h |
| 30 | 5 | **Test** | 40d | 2014-03-10 | 2014-05-02 |  |  |  | 5d |  |  | 720h |
| 31 | 5.1 | Software test | 30d | 2014-03-24 | 2014-05-02 | 2014-03-08 | 2014-05-29 | 60d | 5d | start no earlier than 2014-03-24 | Helena | 240h |
| 32 | 5.2 | software test 2 | 30d | 2014-03-24 | 2014-05-02 |  |  |  | 5d | start no earlier than 2014-03-24 | Dennis | 240h |
| 33 | 5.3 | Hardware test | 30d | 2014-03-10 | 2014-04-18 | 2014-03-08 | 2014-04-17 | 30d | 15d |  | Henry | 240h |
